# CronogramaCiclo2-2003

Schedule from MS Project, 2011-10-05 to 2011-11-01.

## Calendars

- Copia de Estándar: Mon-Fri 09:00-13:00, 15:00-19:00; Sat-Sun off.

## Resources

| Resource |
| --- |
| Sandra |
| Willian |
| Erik |
| Carlos |
| Mauricio |
| David |
| Eriik |
| Davi |

## Schedule

| ID | WBS | Task | Duration | Start | Finish | Predecessors | Total slack | Free slack | Resources | Work |
| --- | --- | --- | --- | --- | --- | --- | --- | --- | --- | --- |
| 1 | 1 | **Ciclo 2** | 19.12d? | 2011-10-05 09:00 | 2011-11-01 10:00 |  | 0d |  |  | 598h |
| 2 | 1.1 | Pantalla de aprobación para del fabricante | 1d? | 2011-10-05 09:00 | 2011-10-05 19:00 |  | 10.88d | 0d | Sandra | 8h |
| 3 | 1.2 | Proceso bpel para enviar correo | 0.5d? | 2011-10-17 10:00 | 2011-10-17 16:00 |  | 10.5d |  | Willian | 4h |
| 4 | 1.3 | **Parte 1** | 10.62d? | 2011-10-05 09:00 | 2011-10-19 16:00 |  | 0d |  |  | 56h |
| 5 | 1.3.1 | Modificar tabla purchase Order en transact para que quede igual a PO | 0.25d? | 2011-10-05 09:00 | 2011-10-05 11:00 |  | 0d |  | Erik | 2h |
| 6 | 1.3.2 | En la app transact Manager, realizar una operación que inserte una orden de compra | 0.5d? | 2011-10-05 11:00 | 2011-10-05 17:00 | 5 | 0d |  | Erik | 4h |
| 7 | 1.3.3 | En la app transact Manager, realizar una operación para agregar una subasta | 0.5d? | 2011-10-05 17:00 | 2011-10-06 11:00 | 6 | 0d |  | Erik | 4h |
| 8 | 1.3.4 | OSB, realizar business service que inserte una orden de compra | 0.25d? | 2011-10-05 11:00 | 2011-10-05 13:00 | 5 | 10.88d | 0d | Carlos | 2h |
| 9 | 1.3.5 | OSB, realizar proxy service una operación que inserte una orden de compra | 0.62d? | 2011-10-05 15:00 | 2011-10-06 10:00 | 8 | 10.88d | 0d | Carlos | 5h |
| 10 | 1.3.6 | OSB, realizar business service para agregar una subasta | 0.25d? | 2011-10-06 11:00 | 2011-10-06 13:00 | 7 | 9.12d | 0d | David | 2h |
| 11 | 1.3.7 | OSB, realizar proxy service una operación para agregar una subasta | 0.62d? | 2011-10-06 15:00 | 2011-10-07 10:00 | 10 | 9.12d | 0d | David | 5h |
| 12 | 1.3.8 | Crear proceso Bpel Parte 1 (Crear subasta) | 0.5d? | 2011-10-07 10:00 | 2011-10-07 16:00 | 11 | 10.25d | 0d | Willian | 4h |
| 13 | 1.3.9 | Vista Ingreso, ordenes de compra | 1d? | 2011-10-07 16:00 | 2011-10-10 16:00 | 12 | 15.5d |  | Sandra | 8h |
| 14 | 1.3.10 | Estimación | 0.75d? | 2011-10-05 09:00 | 2011-10-07 13:00 |  | 16.62d |  | Carlos | 6h |
| 15 | 1.3.11 | Portafolio de servicios detallado (Netbeans) | 1d? | 2011-10-06 11:00 | 2011-10-07 11:00 | 7 | 8.5d | 0d | Mauricio | 8h |
| 16 | 1.3.12 | Riesgos | 0.75d? | 2011-10-07 11:00 | 2011-10-19 16:00 | 15 | 8.5d |  | Mauricio | 6h |
| 17 | 1.4 | **Parte 2** | 2.12d? | 2011-10-06 09:00 | 2011-10-10 10:00 |  | 0.25d |  |  | 29h |
| 18 | 1.4.1 | Modificar en el CRM, consultar clientes por productos | 1d? | 2011-10-06 09:00 | 2011-10-06 19:00 | 2 | 10.88d | 0.62d | Sandra | 8h |
| 19 | 1.4.2 | En la app transact Manager, realizar una operación que inserte un registro en fubasta fabricante | 0.5d? | 2011-10-06 11:00 | 2011-10-06 17:00 | 7 | 0d |  | Erik | 4h |
| 20 | 1.4.3 | OSB, realizar business service que inserte un registro en fubasta fabricante | 0.25d? | 2011-10-06 10:00 | 2011-10-06 12:00 | 9 | 10.88d | 0d | Carlos | 2h |
| 21 | 1.4.4 | OSB, realizar proxy service una operación que inserte un registro en fubasta fabricante | 0.62d? | 2011-10-06 12:00 | 2011-10-06 19:00 | 20 | 10.88d | 0.62d | Carlos | 5h |
| 22 | 1.4.5 | Crear proceso Bpel Parte 2 (Asignar fabricantes subasta) | 0.5d? | 2011-10-07 16:00 | 2011-10-10 10:00 | 12, 21, 18 | 10.25d |  | Willian | 4h |
| 23 | 1.4.6 | Portafolio de servicios detallado (OSB) | 0.75d? | 2011-10-07 10:00 | 2011-10-07 18:00 | 11 | 9.12d | 1.38d | David | 6h |
| 24 | 1.5 | **Parte 3** | 12.88d? | 2011-10-06 17:00 | 2011-10-25 16:00 |  | 0d |  |  | 43h |
| 25 | 1.5.1 | En la app transact Manager, realizar una operación que consulte las subastas activas por id de fabricante | 0.5d? | 2011-10-06 17:00 | 2011-10-07 11:00 | 19 | 0d |  | Erik | 4h |
| 26 | 1.5.2 | En la app transact Manager, realizar una operación que permita al fabricante que registre su oferta | 0.5d? | 2011-10-07 11:00 | 2011-10-07 17:00 | 25 | 0d |  | Erik | 4h |
| 27 | 1.5.3 | OSB, realizar business service que consulte las subastas activas por id de fabricante | 0.25d? | 2011-10-17 10:00 | 2011-10-17 12:00 | 25 | 10.12d | 0d | David | 2h |
| 28 | 1.5.4 | OSB, realizar proxy service una operación que consulte las subastas por id de fabricante | 0.62d? | 2011-10-17 12:00 | 2011-10-17 19:00 | 27 | 10.12d |  | David | 5h |
| 29 | 1.5.5 | OSB, realizar business service que permita al fabricante que registre su oferta | 0.25d? | 2011-10-07 17:00 | 2011-10-07 19:00 | 26 | 8.88d | 0d | Mauricio | 2h |
| 30 | 1.5.6 | OSB, realizar proxy service una operación que permita al fabricante que registre su oferta | 0.62d? | 2011-10-10 09:00 | 2011-10-10 16:00 | 29 | 8.88d |  | Mauricio | 5h |
| 31 | 1.5.7 | En la app transact Manager, realizar una operación que consulte los fabricantes que estan participando en una subasta | 0.5d? | 2011-10-21 09:00 | 2011-10-21 13:00 | 26 | 0d |  | Erik | 4h |
| 32 | 1.5.8 | OSB, realizar business service queconsulte los fabricantes que esten en una subasta | 0.25d? | 2011-10-21 15:00 | 2011-10-21 17:00 | 31, 30 | 0d |  | Carlos | 2h |
| 33 | 1.5.9 | OSB, realizar proxy service que consulte los fabricantes que esten en una subasta | 0.62d? | 2011-10-21 17:00 | 2011-10-24 12:00 | 32 | 0d |  | Carlos | 5h |
| 34 | 1.5.10 | Crear proceso Bpel Parte 3 (Ofertar) | 0.5d? | 2011-10-24 12:00 | 2011-10-24 18:00 | 22, 33 | 0d |  | Willian | 4h |
| 35 | 1.5.11 | Vista para ofertar | 0.75d? | 2011-10-24 18:00 | 2011-10-25 16:00 | 34, 18 | 3.75d | 0d | Sandra | 6h |

| ID | WBS | Task | Duration | Start | Finish | Predecessors | Total slack | Free slack | Resources | Work |
| --- | --- | --- | --- | --- | --- | --- | --- | --- | --- | --- |
| 36 | 1.6 | **Parte 4** | 12.12d? | 2011-10-07 17:00 | 2011-10-25 18:00 |  | 4.25d |  |  | 34h |
| 37 | 1.6.1 | En la app transact Manager, realizar una operación que actualice el estado de la tabla subasta | 0.5d? | 2011-10-07 17:00 | 2011-10-10 11:00 | 26 | 7.75d | 0d | Erik | 4h |
| 38 | 1.6.2 | Crear tabla overhead, (Tiempo, costo, pais origen, pais destino) | 0.5d? | 2011-10-10 11:00 | 2011-10-10 17:00 | 37 | 7.75d | 0d | Erik | 4h |
| 39 | 1.6.3 | En la app transact Manager, realizar una operación que calcule el ganador de la subasta inversa | 0.5d? | 2011-10-10 17:00 | 2011-10-11 11:00 | 38 | 7.75d | 0d | Erik | 4h |
| 40 | 1.6.4 | OSB, realizar business service que actualice el estado de la tabla subasta | 0.25d? | 2011-10-10 11:00 | 2011-10-10 13:00 | 37, 21 | 15d | 0d | Carlos | 2h |
| 41 | 1.6.5 | OSB, realizar proxy service una operación que actualice el estado de la tabla subasta | 0.62d? | 2011-10-10 15:00 | 2011-10-11 10:00 | 40 | 15d |  | Carlos | 5h |
| 42 | 1.6.6 | OSB, realizar business service que calcule el ganador de la subasta inversa | 0.25d? | 2011-10-11 11:00 | 2011-10-11 13:00 | 23, 39 | 7.75d | 0d | David | 2h |
| 43 | 1.6.7 | OSB, realizar proxy service una operación que calcule el ganador de la subasta inversa | 0.62d? | 2011-10-11 15:00 | 2011-10-13 10:00 | 42 | 7.75d |  | David | 5h |
| 44 | 1.6.8 | Crear proceso Bpel Parte4 (Cerrar subasta, Dar Ganador) | 0.5d? | 2011-10-24 18:00 | 2011-10-25 12:00 | 43, 34 | 0d |  | Willian | 4h |
| 45 | 1.6.9 | Crear Bpel enviar correos | 0.5d? | 2011-10-25 12:00 | 2011-10-25 18:00 | 44 | 0d |  | Willian | 4h |
| 46 | 1.7 | Listar portafolio de servicios expuestos (Bpel) | 0.75d? | 2011-10-25 18:00 | 2011-10-26 16:00 | 45 | 0d |  | Willian | 6h |
| 47 | 1.8 | Diagrama entidad relacion transact manager | 0.75d? | 2011-10-11 11:00 | 2011-10-11 19:00 | 39 | 14.12d |  | Erik | 6h |
| 48 | 1.9 | Proceso en BPMN | 0.75d? | 2011-10-27 16:00 | 2011-10-28 12:00 | 46 | 1d | 0d | Willian | 6h |
| 49 | 1.10 | Catalogo Proceso | 0.75d? | 2011-10-28 12:00 | 2011-10-31 10:00 | 48 | 1d |  | Willian | 6h |
| 50 | 1.11 | Crear transformaciones al canonico | 1d? | 2011-10-26 16:00 | 2011-10-27 16:00 | 46 | 0d |  | Willian; Sandra; Erik; Mauricio; David | 40h |
| 51 | 1.12 | Documentación de canonico | 2d? | 2011-10-27 16:00 | 2011-11-01 10:00 | 50 | 0d |  | Willian; Sandra; Erik; Mauricio; David | 40h |
| 52 | 1.13 | Diagrama de navegavión | 0.75d? | 2011-10-25 16:00 | 2011-10-26 12:00 | 35 | 3.75d |  | Sandra | 6h |
| 53 | 1.14 | Estrategia | 0.5d? | 2011-10-18 09:00 | 2011-10-18 13:00 |  | 9.62d |  | David | 4h |
| 54 | 1.15 | Alcance | 0.5d? | 2011-10-18 09:00 | 2011-10-18 13:00 |  | 9.62d |  | Sandra | 4h |
| 55 | 1.16 | Plan de calidad | 0.5d? | 2011-10-07 09:00 | 2011-10-07 13:00 |  | 16.62d |  | Carlos | 4h |
| 56 | 1.17 | Seguimiento | 1d? | 2011-10-05 09:00 | 2011-10-05 19:00 |  | 18.12d |  | Mauricio | 8h |
| 57 | 1.18 | Análisis | 0.75d? | 2011-10-05 09:00 | 2011-10-05 17:00 |  | 18.38d |  | Willian | 6h |
| 58 | 1.19 | Postmortem | 3.12d? | 2011-10-07 18:00 | 2011-10-14 19:00 |  | 11.12d |  | Willian; Sandra; Erik; Mauricio; David | 40h |
| 59 | 1.20 | Plan de mejoramiento detallado | 1d? | 2011-10-21 15:00 | 2011-10-24 13:00 |  | 5.62d |  | Erik | 8h |
| 60 | 1.21 | Plan y Ejecución de pruebas | 3.12d? | 2011-10-10 18:00 | 2011-10-17 19:00 |  | 10.12d |  | Willian; Sandra; Erik; Mauricio; David | 40h |
| 61 | 1.22 | Reporte de incidencias de producto | 3.25d? | 2011-10-11 18:00 | 2011-10-19 10:00 |  | 9d |  | Willian; Sandra; Erik; Mauricio; David | 40h |
| 62 | 1.23 | Implementar aplicación de incidencias | 2.88d? | 2011-10-13 10:00 | 2011-10-19 19:00 |  | 8.12d |  | Willian; Sandra; Erik; Mauricio; David | 40h |
| 63 | 1.24 | Tareas no planeadas | 2.88d? | 2011-10-14 10:00 | 2011-10-20 19:00 |  | 7.12d |  | Willian; Sandra; Erik; Mauricio; David | 40h |
| 64 | 1.25 | Reuniones | 7.25d? | 2011-10-05 09:00 | 2011-10-19 18:00 |  | 8.25d |  | Willian; Sandra; Erik; Mauricio; David | 80h |
